# Installation 2010 Microsoft Office system

Schedule from MS Project, 2011-09-26 to 2011-11-01.

## Calendars

- Standard: Mon-Fri 08:00-12:00, 13:00-17:00; Sat-Sun off.

## Schedule

| ID | WBS | Task | Type | Duration | Start | Finish | Predecessors | Total slack | Free slack | Constraint |
| --- | --- | --- | --- | --- | --- | --- | --- | --- | --- | --- |
| 1 | 1 | **Plan installation of the 2010 Office system** |  | 15d? | 2011-09-26 | 2011-10-14 |  | 0d |  |  |
| 2 | 1.1 | Plan installation of the 2010 Office system | milestone | 0d? | 2011-09-26 | 2011-09-26 |  | 0d |  | must start on 2011-09-26 |
| 3 | 1.2 | Plan installation of the 2010 Office system | milestone | 0d? | 2011-10-10 | 2011-10-10 |  | 0d |  | must finish on 2011-10-10 |
| 4 | 1.3 | Gather existing userbase/platform information |  | 1d? | 2011-09-30 | 2011-09-30 |  | 0d |  | start no earlier than 2011-09-30 |
| 5 | 1.4 | Perform impact analysis and preparation |  | 1d? | 2011-10-03 | 2011-10-03 | 4 | 0d |  |  |
| 6 | 1.5 | Determine 2010 Office system components required |  | 1d? | 2011-10-04 | 2011-10-04 | 5 | 0d |  |  |
| 7 | 1.6 | Plan communication of new corporate standard, broad implementation timeframes |  | 1d? | 2011-10-05 | 2011-10-05 | 6 | 6d | 4d |  |
| 8 | 1.7 | Define usersets and install timeframes and approach |  | 1d? | 2011-10-05 | 2011-10-05 | 6 | 0d |  |  |
| 9 | 1.8 | Determine KMS or Volume Licensing Key |  | 1d? | 2011-10-06 | 2011-10-06 | 8 | 2d | 0d |  |
| 10 | 1.9 | Obtain Home Copies for Distribution |  | 1d? | 2011-10-07 | 2011-10-07 | 9 | 2d | 0d |  |
| 11 | 1.10 | Obtain Deployment Reference Materials |  | 1d? | 2011-10-07 | 2011-10-07 | 10SS | 2d | 0d |  |
| 12 | 1.11 | Determine Group Policies to be instituted |  | 1d? | 2011-10-10 | 2011-10-10 | 11 | 2d | 0d |  |
| 13 | 1.12 | Determine Pilot Users |  | 1d? | 2011-10-11 | 2011-10-11 | 12 | 2d | 0d |  |
| 14 | 1.13 | Prepare user communications for training opportunities and usage expectations |  | 1d? | 2011-10-12 | 2011-10-12 | 7, 13 | 2d |  |  |
| 15 | 1.14 | Confirm Installation media |  | 1d? | 2011-10-06 | 2011-10-06 | 8 | 0d |  |  |
| 16 | 1.15 | Execute Office Environment Planning Manager |  | 2d | 2011-10-07 | 2011-10-10 | 15 | 0d |  | start no earlier than 2011-09-28 |
| 17 | 1.16 | Analyze Office Environment Planning Manager Data |  | 2d | 2011-10-11 | 2011-10-12 | 16 | 0d |  | start no earlier than 2011-09-29 |
| 18 | 1.17 | Prepare helpdesk for initial installation phase support calls |  | 1d? | 2011-10-13 | 2011-10-13 | 17 | 0d |  | start no earlier than 2011-10-03 |
| 19 | 1.18 | Prepare coordination process to keep helpdesk aware of deployment stages and coverage |  | 1d? | 2011-10-14 | 2011-10-14 | 18 | 0d |  |  |
| 20 | 2 | Planning phase complete | milestone | 0d | 2011-10-14 | 2011-10-14 | 14, 15, 19 | 0d |  |  |
| 21 | 3 | **Install the 2010 Office system** |  | 10d? | 2011-10-17 | 2011-10-28 |  | 0d |  |  |
| 22 | 3.1 | **User readiness** |  | 6d? | 2011-10-17 | 2011-10-24 |  | 0d |  |  |
| 23 | 3.1.1 | Communicate timing, training, and support plan for the installation |  | 1d? | 2011-10-17 | 2011-10-17 | 20 | 0d |  |  |
| 24 | 3.1.2 | Distribute Office 2010 Home Use Copies to Pilot Users |  | 2d? | 2011-10-18 | 2011-10-19 | 23 | 0d |  |  |
| 25 | 3.1.3 | Deploy Office 2010 to Key Pilot Users |  | 3d | 2011-10-20 | 2011-10-24 | 24 | 0d |  |  |
| 26 | 3.1.4 | Train end user community, as appropriate, on the 2010 Office system |  | 3d? | 2011-10-20 | 2011-10-24 | 25SS | 0d |  | start no earlier than 2011-10-10 |
| 27 | 3.2 | User readiness complete | milestone | 0d | 2011-10-24 | 2011-10-24 | 26 | 0d |  |  |

Notes:
- 4: The 2010 Microsoft Office system programs client is a 32-bit application and can run on a Windows 64-bit platform (Windows XP, Windows Server 2003, and Windows Vista) but there may be some feature limitations with earlier versions of the OS. The purpose of this activity is to understand the existing environment of the end users and the requirements of the platform. / Each of the products found within the 2010 Office system has similar minimum system requirements, but some may have specific requirements. It's important to understand the system requirements of each component you wish to install. Go to http://office.microsoft.com/en-us/products/HA101668651033.aspx, then click on the individual 2010 Office system components that will be installed to understand the system requirements. The minimum system requirements needed to run all components of the suite selected are identified in this site. Microsoft suggests that you meet or exceed these requirements.
- 5: Once the existing environment and the minimum requirements for installation are known, prepare an impact analysis that identifies hardware and software upgrade requirements, end user capabilities and training needs, and administrator capability and training needs. / The output of this activity should be a plan that includes the details of costs and effort to prepare the organization for the installation of the 2010 Microsoft Office system. (Note that there are different space requirements depending on the choice of components to be installed.)
- 6: Different roles in an organization may require different components of the 2010 Microsoft Office system. When the installation takes place, it is important that the user have access to the appropriate language packs and the appropriate tools to complete his/her job. The choices are made based on your company's agreements for purchase of specific release suites. / For example, Microsoft Office Enterprise 2007 includes: Access 2007, Communicator 2007, Excel 2007, Groove 2007, InfoPath 2007, OneNote 2007, Outlook 2007, PowerPoint 2007, Publisher 2007, and Word 2007. Microsoft Office Basic 2007 includes only three products: Excel 2007, PowerPoint 2007, and Word 2007. / The amount of space required on each user computer will vary based on the release suite chosen for his/her role and the number of language packs required.
- 7: Clear communication of the project is a key factor in a smooth transition to the 2010 Microsoft Office system. A communication plan should be developed to prepare the organization for the general timing of the installation and the expected impact on them. Specific communication should be developed for the various user roles to minimize the amount of confusion as early in the project as possible.
- 8: There are many factors included in this activity that will help to establish the correct approach for installation. Each set of users may have different training needs. The process for installation may vary based on geographical issues, hardware & software upgrades required, HelpDesk/Administrator availability, and the method that is used for installation (discussed in a later note.)
- 10: Calculate 10% of the number of employees to ascertain the number of copies of Office 2010 home use packages to purchase and distribute to key users to act as go-to people during the deployment phase.
- 11: Office 2010 Resource Kit / http://technet.microsoft.com/en-us/library/cc303401.aspx / Office Migration Planning Manager / http://technet.microsoft.com/en-us/library/cc179179.aspx / Office 2010 System Requirements / http://technet.microsoft.com/en-us/library/ee624351.aspx / Setting up Office Migration Planning Manager File Scanner / http://technet.microsoft.com/en-us/library/cc178974.aspx / Configure a silent installation / http://technet.microsoft.com/en-us/library/dd630736.aspx / Office Customization Tool for Office 2010 / http://technet.microsoft.com/en-us/library/cc179097.aspx / Plan Privacy Options for Office 2010 / http://technet.microsoft.com/en-us/library/cc179123.aspx / Configure User Settings / http://technet.microsoft.com/en-us/library/cc178990.aspx / Administrative Template Files and Office Customization Tool / http://technet.microsoft.com/en-us/library/cc178992.aspx / Planning the deployment / http://technet.microsoft.com/en-us/library/cc179137.aspx / Config.xml in Office 2010 / http://technet.microsoft.com/en-us/library/cc179195.aspx / Setup command-line options / http://technet.microsoft.com/en-us/library/cc178956.aspx / Setup properties / http://technet.microsoft.com/en-us/library/cc179018.aspx / Downloadable Content / http://technet.microsoft.com/en-us/library/cc178979.aspx / Tools for Deploying Office 2010 / http://technet.microsoft.com/en-us/library/gg247613.aspx
- 12: Group Policies / http://technet.microsoft.com/en-us/library/gg490629.aspx
- 14: Make sure to identify specific training needs and materials. The training should occur just before the end-user desktop is installed. Allowing too big a gap will reduce effectiveness as the training may be forgotten. / One of the biggest changes for existing Microsoft Office system users is the Top Ribbon in all of the Microsoft Office products. A job aid showing where commonly used functions can be found on the Ribbon and how to customize the Ribbon will go a long way! A user can find help with these new ribbons by going to http://www.microsoft.com/Office and doing a search for "command reference guide". Links to the different 2010 Office system program guides will be listed.
- 15: Installation media should be secured with the appropriate licensing as required for the user community. For small and mid-size organizations, licensing is typically managed through a system administration function. For larger organizations, a 'true-up' method is normally used to reconcile actual usage on a regular basis.
- 18: Problems that arise during the installation phase will be associated with hardware and software compatibility, space issues, and potential problems with the installation scripts. Use cases can be developed to prepare for typical installation problems to anticipate the most common issues.
- 19: As the installation process begins, the user community may be on different releases of the software. This can cause a variety of problems in trouble-shooting and can also increase the call volume because of version differences in documents. Having a clear schedule of events readily available to the HelpDesk will minimize the amount of time it takes to resolve each issue.
- 23: Communication of the plan prior to the installation will create additional awareness and will alleviate some of the normal concerns that arise with any change. A clear plan for HelpDesk support will go a long way to break down resistance.
- 26: Make sure to identify specific training needs and materials. The training should occur just before the end-user desktop is installed. Allowing too big a gap will reduce effectiveness as the training may be forgotten. / One of the biggest changes for existing Microsoft Office system users is the Top Ribbon in all of the office products. A job aid showing where commonly used functions can be found on the Ribbon and how to customize the Ribbon will go a long way! A user can find help with these new ribbons by going to http://www.microsoft.com/Office and doing a search for "command reference guide". Links to the different 2010 Office system program guides will be listed.

| ID | WBS | Task | Type | Duration | Start | Finish | Predecessors | Total slack |
| --- | --- | --- | --- | --- | --- | --- | --- | --- |
| 28 | 3.3 | **Create network installation point(s)** |  | 6d? | 2011-10-17 | 2011-10-24 |  | 0d |
| 29 | 3.3.1 | Setup the network installation point(s) |  | 1d? | 2011-10-17 | 2011-10-17 | 20 | 0d |
| 30 | 3.3.2 | **Setup push scripts or coordinated deployment user instructions/notifications** |  | 4d? | 2011-10-18 | 2011-10-21 | 29 | 0d |
| 31 | 3.3.2.1 | Create customization file(s) |  | 1d? | 2011-10-18 | 2011-10-18 |  | 0d |
| 32 | 3.3.2.2 | Create config.xml file |  | 1d? | 2011-10-19 | 2011-10-19 | 31 | 0d |
| 33 | 3.3.2.3 | Create local installation source |  | 1d? | 2011-10-20 | 2011-10-20 | 32 | 0d |
| 34 | 3.3.2.4 | Apply software updates |  | 1d? | 2011-10-21 | 2011-10-21 | 33 | 0d |
| 35 | 3.3.2.5 | Insert Language Packs |  | 1d? | 2011-10-18 | 2011-10-18 |  | 10d |
| 36 | 3.3.3 | Test the installation script(s) |  | 1d? | 2011-10-24 | 2011-10-24 | 34 | 0d |
| 37 | 3.4 | Network installation setup complete | milestone | 0d | 2011-10-24 | 2011-10-24 | 36 | 0d |
| 38 | 3.5 | **Install the 2010 Office system** |  | 4d? | 2011-10-25 | 2011-10-28 |  | 0d |
| 39 | 3.5.1 | Communicate final installation information |  | 1d? | 2011-10-25 | 2011-10-25 | 27, 37 | 0d |
| 40 | 3.5.2 | Push/install MSI package on client systems |  | 1d? | 2011-10-26 | 2011-10-26 | 39 | 0d |
| 41 | 3.5.3 | Provide helpdesk support for installation issues |  | 1d? | 2011-10-27 | 2011-10-27 | 40 | 0d |
| 42 | 3.5.4 | Confirm with userbase update completion |  | 1d? | 2011-10-28 | 2011-10-28 | 41 | 0d |
| 43 | 3.6 | Install complete | milestone | 0d | 2011-10-28 | 2011-10-28 | 42 | 0d |
| 44 | 4 | Installation phase complete | milestone | 0d | 2011-10-28 | 2011-10-28 | 43 | 0d |
| 45 | 5 | **Project close** |  | 2d? | 2011-10-31 | 2011-11-01 |  | 0d |
| 46 | 5.1 | Validate client systems |  | 1d? | 2011-10-31 | 2011-10-31 | 44 | 0d |
| 47 | 5.2 | Finalize documentation and close project. |  | 1d? | 2011-11-01 | 2011-11-01 | 46 | 0d |
| 48 | 6 | Closing process complete | milestone | 0d | 2011-11-01 | 2011-11-01 | 47 | 0d |
| 49 | 7 | Project complete | milestone | 0d | 2011-11-01 | 2011-11-01 | 48 | 0d |

Notes:
- 29: The Microsoft TechNet site: http://technet.microsoft.com/Office has a complete set of detailed instructions that will help the installation team prepare the detailed scripts for this project. The following is offered as high-level guidance only. / ·Create, replicate, and secure a network installation point. This location (s) will contain the software to be installed. / ·Copy the language packs required and the products to the installation point. / ·If product updates have been released, store the appropriate MSP files in the updates folder. / Differences from previous versions: / ·The Microsoft Office 2010 system has a language-neutral core package. This package needs to be combined with one or more specific language packs and additional customization as appropriate for the user community. Service pack updates may also be available and can be included in the installation process. / ·All installations will occur from the compressed source; this release does not allow you to run from an extract.
- 30: The purpose of this activity is to create the appropriate setup for each set of users in the organization. Multiple scripts may be required. / Installation involves running the Setup.exe program that was prepared during the setup activities. The process will apply the customization and configuration files that were created during this activity. The files will contain XML data that customizes the installation and may also contain default user settings, feature installation states, Microsoft Office Outlook 2010 profiles, and other modifications as defined. / Customization files are product-specific so only those that apply to the products being installed will be applied. Setup will apply all customization files that are included in the same folder, however, so it is critical to store specific customization files in separate folders for different groups of users. / The Microsoft TechNet site: http://technet.microsoft.com/Office has a complete set of detailed instructions that will help the installation team prepare the detailed scripts for this project.
- 31: Customization files are product-specific and allow you to select the features that will/will not be installed on the user computer. Setup applies only those files that are relevant to the product being installed. However, if you store more than one customization file for the same product in the Updates folder, Setup applies all of the files to the user's configuration in alphabetical order. / If you create different configurations for different groups of users, Microsoft recommends that you store the customization files in another location and then use the /adminfile option on the Setup command line to specify the file you want. For example: / ...Office12.exe /adminfile / ...Office12MyUpdatesEngineering.msp / where Office12 is the root of the network installation point. / See http://technet.microsoft.com/Office and select Office Customization Tool for more details.
- 32: Each core product folder contains a Config.xml file that directs Setup to install that product. You can edit Config.xml to customize the installation process. For example, you can use elements in Config.xml to specify which products or languages to include in the installation. Settings in Config.xml take precedence over settings in a customization file and default settings contained in the Setup.xml and Package.xml files. / For more information about how and when to edit Config.xml, see Config.xml file in the 2007 Office system
- 33: Setup calls a program named Office Source Engine (Ose.exe) to create a required local installation source on the user's computer. To create the local installation source, Setup copies files from the installation point to a hidden location on the user's computer. The default location is MSOCacheAll Users at the root of the drive on which the 2007 Microsoft Office system is installed. Later, Setup uses Windows Installer to install the Microsoft Office system from this local installation source. / You can deploy the local installation source in advance and trigger the installation of the Microsoft Office system on users' computers later to reduce the load on the network. In this scenario, you can even run Setup from the local installation source, allowing users to complete the Microsoft Office system installation with no network connection.
- 34: If installation is taking place after one or more service packs have been release, include those packages in the Updates folder on the installation point. The Setup.exe program will apply the updates as part of its installation process.
- 36: Prior to installation across a large user community, each of the scrits should be tested to ensure that the appropriate customizations have been applied.
- 39: At a minimum, a reminder should be provided to the HelpDesk and the end user community prior to installation of the products.
- 40: Installation involves running the Setup.exe program that was prepared during the setup activities. The process is automated and applies the customization and configuration files that were created. The files will contain XML data that customizes the installation and may also contain default user settings, feature installation states, Microsoft Office Outlook 2010 profiles, and other modifications as defined. / Reminder: Customization files are product-specific so only those that apply to the products being installed will be applied. Setup will apply all customization files that are included in the same folder, however, so it is critical to store specific customization files in separate folders for different groups of users.
- 41: Problems that arise during the installation phase will be associated with hardware and software compatibility, space issues, and potential problems with the installation scripts. Use cases can be developed to prepare for typical installation problems to anticipate the most common issues.
- 46: Once installation is complete, a review of the process should be completed to ensure that all end users received the appropriate installation packages and are properly trained and prepared to use them. Attention to this activity will reduce the impact on the HelpDesk personnel and ensure that the end users have a positive experience with the new capabilities of the 2010 Microsoft Office system.
